# Baseline

Schedule from Primavera P6, 2012-01-01 to 2013-02-20, data date 2012-01-01.

## Calendars

- 7x24: Mon-Sun 00:00-00:00. Exceptions (off unless hours are given): 2012-01-02, 2012-05-28, 2012-07-04, 2012-09-03, 2012-11-22, 2012-12-25, 2013-01-01.

## Schedule

| ID | WBS | Activity | Duration | Start | Finish | Predecessors | Total float | Free float | PMS_ID | REV | SCOPE_ID |
| --- | --- | --- | --- | --- | --- | --- | --- | --- | --- | --- | --- |
|  | 01 | **MILESTONES** |  |  |  |  |  |  |  |  |  |
|  | 02 | **MANAGEMENT** |  |  |  |  |  |  |  |  |  |
|  | 03 | **GENERAL** |  |  |  |  |  |  |  |  |  |
|  | 04 | **ENGINEERING** |  | 2012-01-01 | 2012-01-15 |  |  |  |  |  |  |
|  | 01 | **CIVIL** |  | 2012-01-01 | 2012-01-15 |  |  |  |  |  |  |
| 20 |  | CIVIL WORKS GENERAL LAYOUT | 13.75d | 2012-01-01 | 2012-01-15 |  | 206.5d | 0d | ENEngmanhour | 0 | E000EN1000 |
|  | 02 | **STRUCTURAL** |  |  |  |  |  |  |  |  |  |
|  | 03 | **MECHANICAL** |  |  |  |  |  |  |  |  |  |
|  | 04 | **PIPING** |  |  |  |  |  |  |  |  |  |
|  | 05 | **ELECTRICAL** |  |  |  |  |  |  |  |  |  |
|  | 06 | **INSTRUMENTATION** |  |  |  |  |  |  |  |  |  |
|  | 05 | **PROCUREMENT** |  | 2012-01-15 | 2012-07-11 |  |  |  |  |  |  |
|  | 01 | **LONG LEAD** |  | 2012-01-15 | 2012-07-11 |  |  |  |  |  |  |
| 21 |  | Pump - Request for Quotation | 29.96d | 2012-01-15 | 2012-02-14 | 20 | 206.5d | 0d | PR01-PR-02Procost-A | 0 | P100PR100A01-PR-02 |
| 22 |  | Pump - Bidding Phase | 6.96d | 2012-02-14 | 2012-02-21 | 21 | 206.5d | 0d | PR01-PR-02Procost-B | 0 | P100PR100B01-PR-02 |
| 23 |  | Pump - Commercial Evaluation | 13.96d | 2012-02-21 | 2012-03-06 | 22 | 206.5d | 0d | PR01-PR-02Procost-C | 0 | P100PR100C01-PR-02 |
| 24 |  | Pump - Purchase Order | 24.96d | 2012-03-06 | 2012-03-31 | 23 | 206.5d | 0d | PR01-PR-02Procost-D | 0 | P100PR100D01-PR-02 |
| 25 |  | Pump - Manufacturing | 59.96d | 2012-03-31 | 2012-05-31 | 24 | 206.5d | 0d | PR01-PR-02Procost-E | 0 | P100PR100E01-PR-02 |
| 26 |  | Pump - Transport to Site | 39.96d | 2012-05-31 | 2012-07-11 | 25 | 206.5d | 0d | PR01-PR-02Procost-F | 0 | P100PR100F01-PR-02 |
|  | 02 | **ITEMIZED EQUIPEMENT** |  |  |  |  |  |  |  |  |  |
|  | 03 | **BULK MATERIAL** |  |  |  |  |  |  |  |  |  |
|  | 06 | **CONSTRUCTION** |  | 2012-01-01 | 2013-02-20 |  |  |  |  |  |  |
|  | 01 | **GENERAL** |  | 2012-11-13 | 2013-02-20 |  |  |  |  |  |  |
|  | 01 | **GENERAL AREA** |  | 2012-11-13 | 2013-02-20 |  |  |  |  |  |  |
|  | 01 | **CIVIL** |  | 2012-11-13 | 2013-02-20 |  |  |  |  |  |  |
| 17 |  | Top soil removal | 27.5d | 2012-11-13 | 2012-12-12 | 16 | 0d |  | COA100SPCV0120 | 0 | C000CV0120SP |
| 18 |  | GENERAL EXCAVATIONS | 13.75d | 2012-12-12 | 2012-12-26 | 17 | 0d |  | COA100SPCV0130 | 0 | C000CV0130SP |
| 19 |  | General backfil. of area/roads | 55d | 2012-12-26 | 2013-02-20 | 18 | 0d |  | COA100SPCV0140 | 0 | C000CV0140SP |

| ID | WBS | Activity | Duration | Start | Finish | Predecessors | Total float | PMS_ID | REV | SCOPE_ID |
| --- | --- | --- | --- | --- | --- | --- | --- | --- | --- | --- |
|  | 02 | **STRUCTURAL** |  |  |  |  |  |  |  |  |
|  | 03 | **MECHANICAL** |  |  |  |  |  |  |  |  |
|  | 04 | **PIPING** |  |  |  |  |  |  |  |  |
|  | 05 | **ELECTRICAL** |  |  |  |  |  |  |  |  |
|  | 06 | **INSTRUMENTATION** |  |  |  |  |  |  |  |  |
|  | 02 | **PROCESS** |  | 2012-01-01 | 2012-11-13 |  |  |  |  |  |
|  | 01 | **MAIN PUMPS AREA** |  | 2012-01-01 | 2012-11-13 |  |  |  |  |  |
|  | 01 | **PUMP 01-PR-02** |  | 2012-01-01 | 2012-03-15 |  |  |  |  |  |
|  | 01 | **CIVIL** |  | 2012-01-01 | 2012-01-29 |  |  |  |  |  |
| 1 |  | Foundation Civil Works | 27.5d | 2012-01-01 | 2012-01-29 |  | 0d | COA11001-PR-02CV1020 | 0 | C150CV102001-PR-02 |
|  | 02 | **STRUCTURAL** |  |  |  |  |  |  |  |  |
|  | 03 | **MECHANICAL** |  | 2012-01-29 | 2012-02-26 |  |  |  |  |  |
| 2 |  | EREC.OF ASSEMBLED MACHINERY | 27.5d | 2012-01-29 | 2012-02-26 | 1 | 0d | COA11001-PR-02MC2210 | 0 | C150MC221001-PR-02 |
|  | 04 | **PIPING** |  | 2012-02-26 | 2012-03-15 |  |  |  |  |  |
| 3 |  | INSUL.OF HOT & TRACED EQUIPM. | 13.75d | 2012-02-26 | 2012-03-10 | 2 | 0d | COA11001-PR-02RV0210 | 0 | C150RV021001-PR-02 |
| 4 |  | FIN.COAT FOR MACH./MEC.LIFTING | 4.58d | 2012-03-10 | 2012-03-15 | 3 | 0d | COA11001-PR-02VR0290 | 0 | C150VR029001-PR-02 |
|  | 05 | **ELECTRICAL** |  |  |  |  |  |  |  |  |
|  | 06 | **INSTRUMENTATION** |  |  |  |  |  |  |  |  |
|  | 02 | **PUMP 01-PR-03** |  | 2012-03-15 | 2012-05-30 |  |  |  |  |  |
|  | 01 | **CIVIL** |  | 2012-03-15 | 2012-04-11 |  |  |  |  |  |
| 5 |  | Foundation Civil Works | 27.5d | 2012-03-15 | 2012-04-11 | 4 | 0d | COA12001-PR-03CV1020 | 0 | C150CV102001-PR-03 |
|  | 02 | **STRUCTURAL** |  |  |  |  |  |  |  |  |
|  | 03 | **MECHANICAL** |  | 2012-04-11 | 2012-04-25 |  |  |  |  |  |
| 6 |  | EREC.OF ASSEMBLED MACHINERY | 13.75d | 2012-04-11 | 2012-04-25 | 5 | 0d | COA12001-PR-03MC2210 | 0 | C150MC221001-PR-03 |

| ID | WBS | Activity | Duration | Start | Finish | Predecessors | Total float | PMS_ID | REV | SCOPE_ID |
| --- | --- | --- | --- | --- | --- | --- | --- | --- | --- | --- |
|  | 04 | **PIPING** |  | 2012-04-25 | 2012-05-30 |  |  |  |  |  |
| 7 |  | INSUL.OF HOT & TRACED EQUIPM. | 27.5d | 2012-04-25 | 2012-05-23 | 6 | 0d | COA12001-PR-03RV0210 | 0 | C150RV021001-PR-03 |
| 8 |  | FIN.COAT FOR MACH./MEC.LIFTING | 6.42d | 2012-05-23 | 2012-05-30 | 7 | 0d | COA12001-PR-03VR0290 | 0 | C150VR029001-PR-03 |
|  | 05 | **ELECTRICAL** |  |  |  |  |  |  |  |  |
|  | 06 | **INSTRUMENTATION** |  |  |  |  |  |  |  |  |
|  | 03 | **PUMP 01-PR-04** |  | 2012-05-30 | 2012-09-14 |  |  |  |  |  |
|  | 01 | **CIVIL** |  | 2012-05-30 | 2012-06-27 |  |  |  |  |  |
| 9 |  | Foundation Civil Works | 27.5d | 2012-05-30 | 2012-06-27 | 8 | 0d | COA13001-PR-04CV1020 | 0 | C150CV102001-PR-04 |
|  | 02 | **STRUCTURAL** |  |  |  |  |  |  |  |  |
|  | 03 | **MECHANICAL** |  | 2012-06-27 | 2012-07-11 |  |  |  |  |  |
| 10 |  | EREC.OF ASSEMBLED MACHINERY | 13.75d | 2012-06-27 | 2012-07-11 | 9 | 0d | COA13001-PR-04MC2210 | 0 | C150MC221001-PR-04 |
|  | 04 | **PIPING** |  | 2012-07-11 | 2012-09-14 |  |  |  |  |  |
| 11 |  | INSUL.OF HOT & TRACED EQUIPM. | 27.5d | 2012-07-11 | 2012-08-08 | 10 | 0d | COA13001-PR-04RV0210 | 0 | C150RV021001-PR-04 |
| 12 |  | FIN.COAT FOR MACH./MEC.LIFTING | 36.67d | 2012-08-08 | 2012-09-14 | 11 | 0d | COA13001-PR-04VR0290 | 0 | C150VR029001-PR-04 |
|  | 05 | **ELECTRICAL** |  |  |  |  |  |  |  |  |
|  | 06 | **INSTRUMENTATION** |  |  |  |  |  |  |  |  |
|  | 04 | **PUMP 01-PR-05** |  | 2012-09-14 | 2012-11-13 |  |  |  |  |  |
|  | 01 | **CIVIL** |  | 2012-09-14 | 2012-10-03 |  |  |  |  |  |
| 13 |  | Foundation Civil Works | 18.33d | 2012-09-14 | 2012-10-03 | 12 | 0d | COA14001-PR-05CV1020 | 0 | C150CV102001-PR-05 |
|  | 02 | **STRUCTURAL** |  |  |  |  |  |  |  |  |
|  | 03 | **MECHANICAL** |  | 2012-10-03 | 2012-10-17 |  |  |  |  |  |
| 14 |  | EREC.OF ASSEMBLED MACHINERY | 13.75d | 2012-10-03 | 2012-10-17 | 13 | 0d | COA14001-PR-05MC2210 | 0 | C150MC221001-PR-05 |
|  | 04 | **PIPING** |  | 2012-10-17 | 2012-11-13 |  |  |  |  |  |
| 15 |  | INSUL.OF HOT & TRACED EQUIPM. | 13.75d | 2012-10-17 | 2012-10-30 | 14 | 0d | COA14001-PR-05RV0210 | 0 | C150RV021001-PR-05 |
| 16 |  | FIN.COAT FOR MACH./MEC.LIFTING | 13.75d | 2012-10-30 | 2012-11-13 | 15 | 0d | COA14001-PR-05VR0290 | 0 | C150VR029001-PR-05 |

| ID | WBS | Activity | Duration | Start | Finish | Predecessors | Total float | PMS_ID | REV | SCOPE_ID |
| --- | --- | --- | --- | --- | --- | --- | --- | --- | --- | --- |
|  | 05 | **ELECTRICAL** |  |  |  |  |  |  |  |  |
|  | 06 | **INSTRUMENTATION** |  |  |  |  |  |  |  |  |
|  | 02 | **PIPERACK AREA** |  |  |  |  |  |  |  |  |
|  | 03 | **UTILITIES** |  |  |  |  |  |  |  |  |
|  | 04 | **TANK FARM** |  |  |  |  |  |  |  |  |
|  | 07 | **PRECOMMISSIONING** |  |  |  |  |  |  |  |  |
|  | 08 | **COMMISSIONING** |  | 2012-07-11 | 2012-07-25 |  |  |  |  |  |
| 27 |  | Commissioning Air system | 13.75d | 2012-07-11 | 2012-07-25 | 26 | 206.5d | CMCM000 | 0 | M100CM0000 |
|  | 09 | **START UP** |  |  |  |  |  |  |  |  |
